# WellQC Subsurface Log QA Schedule

Schedule from MS Project, 2026-07-20 to 2026-11-02, A marks actual dates.
NDI-G5 WellQC Team

## Calendars

- Standard: Mon-Fri 08:00-12:00, 13:00-17:00; Sat-Sun off.

## Schedule

| ID | WBS | Task | Type | Duration | Start | Finish | Predecessors | Complete | Remaining | Total slack |
| --- | --- | --- | --- | --- | --- | --- | --- | --- | --- | --- |
| 1 | 1 | **WellQC Platform Development** |  | 76d | 2026-07-20 A | 2026-11-02 |  | 83% | 13.2d | 0d |
| 2 | 1.1 | **Sprint 1: Discovery, Architecture & Core Stack** |  | 10d | 2026-07-20 A | 2026-07-31 A |  | 100% |  |  |
| 3 | 1.1.1 | Petrophysical Domain Modeling & Curve Physical Limits | milestone | 0d | 2026-07-20 A | 2026-07-20 A |  | 100% |  |  |
| 4 | 1.1.2 | LAS 2.0 Parser Engine & Line Splitter Validation |  | 6d | 2026-07-22 A | 2026-07-29 A | 3 | 100% |  |  |
| 5 | 1.1.3 | Next.js 15 App Shell, Navigation & Design System | milestone | 0d | 2026-07-20 A | 2026-07-20 A |  | 100% |  |  |
| 6 | 1.1.4 | Database Schema Design & Prisma Setup |  | 7d | 2026-07-22 A | 2026-07-30 A | 3 | 100% |  |  |
| 7 | 1.1.5 | CI/CD Pipeline Setup & Repository Governance | milestone | 0d | 2026-07-20 A | 2026-07-20 A |  | 100% |  |  |
| 8 | 1.1.6 | Milestone: Core Architecture & Ingestion Proof-of-Concept |  | 1d | 2026-07-31 A | 2026-07-31 A | 4, 5, 6, 7 | 100% |  |  |
| 9 | 1.2 | **Sprint 2: Foundation, Auth & Multi-Tenant Database** |  | 10d | 2026-08-03 A | 2026-08-14 A | 8 | 100% |  |  |
| 10 | 1.2.1 | Multi-Tenant PostgreSQL Architecture on Neon |  | 5d | 2026-08-03 A | 2026-08-07 A | 8 | 100% |  |  |
| 11 | 1.2.2 | Authentication Engine, Session Tokens & Scrypt Hashing |  | 5d | 2026-08-05 A | 2026-08-11 A | 10 | 100% |  |  |
| 12 | 1.2.3 | Mnemonic Dictionary & 14 Standard Curve Classifications |  | 5d | 2026-08-03 A | 2026-08-07 A | 8 | 100% |  |  |
| 13 | 1.2.4 | Wireline Curve Anomaly Classification & Root Cause Engine |  | 5d | 2026-08-06 A | 2026-08-12 A | 12 | 100% |  |  |
| 14 | 1.2.5 | File Upload UI with Drag-and-Drop & Pre-Validation |  | 5d | 2026-08-07 A | 2026-08-13 A | 11 | 100% |  |  |
| 15 | 1.2.6 | Vercel Preview Deployments & DB Migration Automation |  | 10d | 2026-08-03 A | 2026-08-14 A | 8 | 100% |  |  |
| 16 | 1.2.7 | Milestone: Authenticated Ingestion & Mnemonic Baseline |  | 1d | 2026-08-14 A | 2026-08-14 A | 10, 11, 13, 14, 15 | 100% |  |  |
| 17 | 1.3 | **Sprint 3: Core Engine, Quality Scoring & Ingestion Workspace** |  | 10d | 2026-08-17 A | 2026-08-28 A | 16 | 100% |  |  |
| 18 | 1.3.1 | Multi-Factor Quality Scoring Algorithm (Completeness/Integrity/Noise) |  | 5d | 2026-08-17 A | 2026-08-21 A | 16 | 100% |  |  |
| 19 | 1.3.2 | Upload Workspace Redesign & Modular Tabbed Layout |  | 5d | 2026-08-18 A | 2026-08-24 A | 16 | 100% |  |  |
| 20 | 1.3.3 | Subsurface Basin Analytics & KPI Dashboard Aggregations |  | 5d | 2026-08-19 A | 2026-08-25 A | 18 | 100% |  |  |
| 21 | 1.3.4 | Automated PDF Audit Report Generator |  | 5d | 2026-08-21 A | 2026-08-27 A | 18 | 100% |  |  |
| 22 | 1.3.5 | Atomic Transaction Ingestion Pipeline & Downsampling |  | 5d | 2026-08-20 A | 2026-08-26 A | 18 | 100% |  |  |
| 23 | 1.3.6 | Milestone: Complete Quality Scoring & PDF Audit Capability |  | 1d | 2026-08-28 A | 2026-08-28 A | 18, 19, 20, 21, 22 | 100% |  |  |
| 24 | 1.4 | **Sprint 4: Advanced Visualisation, Imputation & Python Migration** |  | 10d | 2026-08-31 A | 2026-09-11 A | 23 | 100% |  |  |
| 25 | 1.4.1 | FastAPI Microservice Migration & Native NumPy/Pandas Stack |  | 6d | 2026-08-31 A | 2026-09-07 A | 23 | 100% |  |  |
| 26 | 1.4.2 | SVG Multi-Track Wireline Log Viewer with Depth Sync |  | 6d | 2026-09-01 A | 2026-09-08 A | 23 | 100% |  |  |
| 27 | 1.4.3 | Custom Mnemonic Aliases & Tenant Rule Management |  | 5d | 2026-09-02 A | 2026-09-08 A | 25 | 100% |  |  |
| 28 | 1.4.4 | Imputation Algorithm Benchmark (KNN, Spline, Iterative SVD) |  | 5d | 2026-09-03 A | 2026-09-09 A | 25 | 100% |  |  |
| 29 | 1.4.5 | Zero-Mock Clean Seeder & Performance Load Testing |  | 5d | 2026-09-04 A | 2026-09-10 A | 25 | 100% |  |  |
| 30 | 1.4.6 | Milestone: Unified Python Backend & Interactive Log Viewer |  | 1d | 2026-09-11 A | 2026-09-11 A | 25, 26, 27, 28, 29 | 100% |  |  |

| ID | WBS | Task | Duration | Start | Finish | Predecessors | Complete | Remaining | Total slack |
| --- | --- | --- | --- | --- | --- | --- | --- | --- | --- |
| 31 | 1.5 | **Sprint 5: Security Hardening, Default-to-Deny RBAC & Admin Tools** | 10d | 2026-09-14 A | 2026-09-25 A | 30 | 100% |  |  |
| 32 | 1.5.1 | Server-Side RBAC Enforcement & Ghost Token Elimination | 5d | 2026-09-14 A | 2026-09-18 A | 30 | 100% |  |  |
| 33 | 1.5.2 | Self-Registration Role Escalation Block (403 on ADMIN role) | 4d | 2026-09-16 A | 2026-09-21 A | 32 | 100% |  |  |
| 34 | 1.5.3 | Interactive Admin Management CLI (`manage_admin.py`) | 4d | 2026-09-17 A | 2026-09-22 A | 32 | 100% |  |  |
| 35 | 1.5.4 | Admin Panel UI with Tabbed User Management & Tokens | 5d | 2026-09-18 A | 2026-09-24 A | 33 | 100% |  |  |
| 36 | 1.5.5 | Automated Security Test Suite (14 Tests in `test_admin_auth.py`) | 5d | 2026-09-21 A | 2026-09-25 A | 33 | 100% |  |  |
| 37 | 1.5.6 | Milestone: Default-to-Deny Security & Administrative Center | 1d | 2026-09-25 A | 2026-09-25 A | 32, 33, 34, 35, 36 | 100% |  |  |
| 38 | 1.6 | **Sprint 6: Production Hardening & Quality Engine 12-Item Overhaul** | 10d | 2026-09-28 A | 2026-10-09 A | 37 | 100% |  |  |
| 39 | 1.6.1 | Item 1-2: Per-Row Anomaly Approvals & Specific Method Routing | 5d | 2026-09-28 A | 2026-10-02 A | 37 | 100% |  |  |
| 40 | 1.6.2 | Item 3: AUTO Imputation Gap Ranking via Cross-Validation | 5d | 2026-09-29 A | 2026-10-05 A | 39 | 100% |  |  |
| 41 | 1.6.3 | Item 4: Impossible Values Action Suite (Remove / Clip / Delete Row) | 5d | 2026-09-30 A | 2026-10-06 A | 39 | 100% |  |  |
| 42 | 1.6.4 | Item 5: Long Null Cluster Guards & Unfillable Flag Boundaries | 4d | 2026-10-01 A | 2026-10-06 A | 40 | 100% |  |  |
| 43 | 1.6.5 | Item 6-7: Duplicate Depth Prune & 2-Point Neighbour Despiking | 4d | 2026-10-02 A | 2026-10-07 A | 41 | 100% |  |  |
| 44 | 1.6.6 | Item 8-9: Real Change Report Telemetry & Audit Certificate ID | 4d | 2026-10-05 A | 2026-10-08 A | 42, 43 | 100% |  |  |
| 45 | 1.6.7 | Item 10-12: Staged Non-Destructive QA UI & Cleaned Export Suite | 5d | 2026-10-05 A | 2026-10-09 A | 39 | 100% |  |  |
| 46 | 1.6.8 | Sliding-Window IP Rate Limiter & Security Stabilization | 5d | 2026-09-28 A | 2026-10-02 A | 37 | 100% |  |  |
| 47 | 1.6.9 | Milestone: Certified Quality Engine Overhaul & Audit Pipeline | 1d | 2026-10-09 A | 2026-10-09 A | 39, 40, 41, 42, 43, 44, 45, 46 | 100% |  |  |
| 48 | 1.7 | **Sprint 7: Multi-Well Comparison, NUPRC Compliance & Batch Processing** | 16d | 2026-10-12 A | 2026-11-02 | 47 | 21% | 12.6d | 0d |
| 49 | 1.7.1 | Multi-Well Depth Alignment & Correlation Engine (SE1) | 5d | 2026-10-12 A | 2026-10-16 A | 47 | 100% |  |  |
| 50 | 1.7.2 | Cross-Well Canvas UI with Synchronized Depth Scrolling (SE2) | 5d | 2026-10-19 | 2026-10-23 | 49 |  |  | 0d |
| 51 | 1.7.3 | Unsupervised ML Lithology Classification on GR-RHOB-NPHI (SE1) | 4d | 2026-10-19 | 2026-10-22 | 49 |  |  | 1d |
| 52 | 1.7.4 | NUPRC Compliance Report Template & Digital Signatures (SE2, DA4) | 5d | 2026-10-12 | 2026-10-16 | 47 |  |  | 5d |
| 53 | 1.7.5 | Niger Delta Formation Cutoffs (Akata, Agbada, Benin) (DA1, DA2) | 5d | 2026-10-12 A | 2026-10-16 A | 47 | 100% |  |  |
| 54 | 1.7.6 | Offset Niger Delta Demonstration Well Package Curation (DA3) | 5d | 2026-10-19 | 2026-10-23 | 53 |  |  | 0d |
| 55 | 1.7.7 | Asynchronous Batch Ingestion Background Workers & Live Progress (CE1) | 6d | 2026-10-12 | 2026-10-19 | 47 |  |  | 4d |
| 56 | 1.7.8 | Outbound Webhook Event Dispatcher for Cloud Storage Sync (CE2) | 6d | 2026-10-12 | 2026-10-19 | 47 |  |  | 4d |
| 57 | 1.7.9 | End-to-End System Integration & Acceptance Testing Suite (All) | 5d | 2026-10-26 | 2026-10-30 | 50, 51, 52, 54, 55, 56 |  |  | 0d |
| 58 | 1.7.10 | Milestone: Final Production Platform Release & NUPRC Audit Readiness | 1d | 2026-11-02 | 2026-11-02 | 57 |  |  | 0d |
